| TaskID | TaskName | StartDate | EndDate | Duration | Progress | info | DurationUnit | resources | Predecessor |
| --- | --- | --- | --- | --- | --- | --- | --- | --- | --- |
| 1 | Delaren AI Automation Stack - OPTIMIZED | 2025-09-06T12:00:00.000Z | 2025-11-01T21:00:00.000Z | 56 | 0 | Voice AI-first automation system for CDMX SMBs targeting $3,000+ MXN monthly recurring revenue in 8 weeks | day |  |  |
| 10 | · PHASE 1: Foundation & Voice AI Launch (8 weeks) | 2025-09-06T12:00:00.000Z | 2025-11-01T21:00:00.000Z | 56 | 0 | Optimized launch focused on existing clients with Telnyx Voice AI only | day | Alfredo Alfredo 100 |  |
| 100 | · · Sprint 1-2: Market Validation (Weeks 1-2) | 2025-09-06T12:00:00.000Z | 2025-09-19T21:00:00.000Z | 14 | 0 | Focus on existing clients and warm CDMX network validation | day | Alfredo Alfredo 100 |  |
| 101 | · · · 1.1 Interview Existing Clients | 2025-09-06T12:00:00.000Z | 2025-09-10T21:00:00.000Z | 3 | 0 | CRITICAL: Interview 3 current clients about automation needs and get pilot commitments (6 hours) | day | Alfredo Alfredo 100 |  |
| 102 | · · · 1.2 CDMX Warm Network Research | 2025-09-11T12:00:00.000Z | 2025-09-17T21:00:00.000Z | 5 | 0 | CRITICAL: Interview 7 CDMX SMBs through warm network connections (15 hours) | day | Alfredo Alfredo 100 | 101FS |
| 103 | · · · 1.3 Value Proposition Development | 2025-09-18T12:00:00.000Z | 2025-09-19T21:00:00.000Z | 2 | 0 | CRITICAL: Create compelling value prop based on validated pain points (4 hours) | day | Alfredo Alfredo 100 | 102FS |
| 104 | · · · M1: Market Validation Complete | 2025-09-19T21:00:00.000Z | 2025-09-19T21:00:00.000Z | 0 | 0 | MILESTONE: 2+ existing clients committed to pilot, CDMX demand validated | day | Alfredo Alfredo 100 | 103FS |
| 200 | · · Sprint 3-4: Voice AI Development (Weeks 3-4) | 2025-09-20T12:00:00.000Z | 2025-10-03T21:00:00.000Z | 14 | 0 | Focus exclusively on Telnyx Voice AI system - no WhatsApp complexity | day | Alfredo Alfredo 100 | 104FS |
| 201 | · · · 2.1 Telnyx Account & Setup | 2025-09-20T12:00:00.000Z | 2025-09-23T21:00:00.000Z | 2 | 0 | CRITICAL: Account setup, phone number provisioning, basic configuration (4 hours) | day | Alfredo Alfredo 100 | 104FS |
| 202 | · · · 2.2 Spanish Voice Scripts | 2025-09-24T12:00:00.000Z | 2025-09-27T21:00:00.000Z | 3 | 0 | CRITICAL: Core Spanish scripts for lead capture, qualification, booking (12 hours) | day | Alfredo Alfredo 100 | 201FS |
| 203 | · · · 2.3 Call Flow Implementation | 2025-09-30T12:00:00.000Z | 2025-10-02T21:00:00.000Z | 3 | 0 | CRITICAL: Implement call logic, escalation, basic CRM integration (12 hours) | day | Alfredo Alfredo 100 | 202FS |
| 204 | · · · 2.4 System Testing | 2025-10-03T12:00:00.000Z | 2025-10-03T21:00:00.000Z | 1 | 0 | CRITICAL: End-to-end testing and optimization (8 hours) | day | Alfredo Alfredo 100 | 203FS |
| 205 | · · · M2: Voice AI System Live | 2025-10-03T21:00:00.000Z | 2025-10-03T21:00:00.000Z | 0 | 0 | MILESTONE: Telnyx Voice AI handling calls with 80%+ success rate | day | Alfredo Alfredo 100 | 204FS |
| 300 | · · Sprint 5-6: Client Acquisition (Weeks 5-6) | 2025-10-04T12:00:00.000Z | 2025-10-17T21:00:00.000Z | 14 | 0 | Focus on existing clients and warm referrals - minimal cold outreach | day | Alfredo Alfredo 100 | 205FS |
| 301 | · · · 3.1 Demo Script Creation | 2025-10-04T12:00:00.000Z | 2025-10-07T21:00:00.000Z | 2 | 0 | CRITICAL: Simple, compelling live demo script for Voice AI (8 hours) | day | Alfredo Alfredo 100 | 205FS |
| 302 | · · · 3.2 Existing Client Presentations | 2025-10-08T12:00:00.000Z | 2025-10-10T21:00:00.000Z | 3 | 0 | CRITICAL: Present and demo to 3 existing clients, secure pilot agreements (12 hours) | day | Alfredo Alfredo 100 | 301FS |
| 303 | · · · 3.3 Warm Network Outreach | 2025-10-11T12:00:00.000Z | 2025-10-15T21:00:00.000Z | 3 | 0 | Reach out to warm CDMX connections and referrals (12 hours) | day | Alfredo Alfredo 100 | 302FS |
| 304 | · · · 3.4 Basic Onboarding Process | 2025-10-16T12:00:00.000Z | 2025-10-17T21:00:00.000Z | 2 | 0 | Simple client onboarding checklist and process (4 hours) | day | Alfredo Alfredo 100 | 302SS+6 |
| 305 | · · · M3: First Paying Client | 2025-10-17T21:00:00.000Z | 2025-10-17T21:00:00.000Z | 0 | 0 | MILESTONE: 1+ client paying $1,500+ MXN monthly for Voice AI service | day | Alfredo Alfredo 100 | 304FS |
| 400 | · · Sprint 7-8: Revenue Generation (Weeks 7-8) | 2025-10-18T12:00:00.000Z | 2025-11-01T21:00:00.000Z | 15 | 0 | Focus on client success and scaling to $3,000+ MXN monthly recurring revenue | day | Alfredo Alfredo 100 | 305FS |
| 401 | · · · 4.1 Client Success Management | 2025-10-18T12:00:00.000Z | 2025-10-28T21:00:00.000Z | 8 | 0 | CRITICAL: Daily monitoring, optimization, satisfaction tracking (24 hours) | day | Alfredo Alfredo 100 | 305FS |
| 402 | · · · 4.2 System Optimization | 2025-10-22T12:00:00.000Z | 2025-10-28T21:00:00.000Z | 5 | 0 | CRITICAL: Performance improvements based on real usage data (16 hours) | day | Alfredo Alfredo 100 | 401SS+3 |
| 403 | · · · 4.3 Referral Generation | 2025-10-29T12:00:00.000Z | 2025-10-31T21:00:00.000Z | 3 | 0 | Simple referral requests from satisfied clients (8 hours) | day | Alfredo Alfredo 100 | 401FS |
| 404 | · · · 4.4 Second Client Acquisition | 2025-10-25T12:00:00.000Z | 2025-11-01T21:00:00.000Z | 5 | 0 | CRITICAL: Secure second paying client through referrals or warm network (12 hours) | day | Alfredo Alfredo 100 | 401SS+5 |
| 405 | · · · M4: $3K MRR Achieved | 2025-11-01T21:00:00.000Z | 2025-11-01T21:00:00.000Z | 0 | 0 | MILESTONE: $3,000+ MXN monthly recurring revenue with 2 active Voice AI clients | day | Alfredo Alfredo 100 | 404FS |
| 500 | · · Ongoing: Project Management | 2025-09-06T12:00:00.000Z | 2025-11-01T21:00:00.000Z | 56 | 0 | Weekly progress tracking and budget monitoring throughout Phase 1 | day | Alfredo Alfredo 20 |  |
| 501 | · · · Weekly Progress Reviews | 2025-09-06T12:00:00.000Z | 2025-11-01T21:00:00.000Z | 56 | 0 | 2 hours weekly for progress tracking, budget monitoring, risk management | day | Alfredo Alfredo 20 |  |
| 502 | · · · Documentation & Lessons | 2025-10-25T12:00:00.000Z | 2025-11-01T21:00:00.000Z | 5 | 0 | Document Phase 1 lessons learned and prepare Phase 2 planning (8 hours) | day | Alfredo Alfredo 50 | 403SS |
| 600 | · PHASE 2: WhatsApp Integration (Optional - 4 weeks) | 2025-11-03T12:00:00.000Z | 2025-11-28T21:00:00.000Z | 25 | 0 | Optional expansion to full Voice AI + WhatsApp stack if demand validated | day | Alfredo Alfredo 100 | 405FS+1 |
| 601 | · · WhatsApp Integration | 2025-11-03T12:00:00.000Z | 2025-11-14T21:00:00.000Z | 10 | 0 | LancePilot setup, HSM templates, integration with existing Voice AI system (40 hours) | day | Alfredo Alfredo 100 | 405FS+1 |
| 602 | · · Full Stack Optimization | 2025-11-17T12:00:00.000Z | 2025-11-28T21:00:00.000Z | 10 | 0 | Integrated system testing, client expansion to $6K MRR (40 hours) | day | Alfredo Alfredo 100 | 601FS |
| 603 | · · M5: Full Stack $6K MRR | 2025-11-28T21:00:00.000Z | 2025-11-28T21:00:00.000Z | 0 | 0 | MILESTONE: $6,000+ MXN monthly recurring revenue with Voice AI + WhatsApp | day | Alfredo Alfredo 100 | 602FS |

Links (from, to):
- 8 12
- 13 17
