| TaskID | TaskName | StartDate | EndDate | Duration | Progress | info | DurationUnit | resources | Predecessor |
| --- | --- | --- | --- | --- | --- | --- | --- | --- | --- |
| 1 | Delaren AI Automation Stack | 2025-09-06T12:00:00.000Z | 2025-12-31T21:00:00.000Z | 116 | 0 | Bilingual Voice AI + WhatsApp automation system for CDMX/Vancouver SMBs generating $6000+ MXN monthly recurring revenue | day |  |  |
| 10 | · 1.0 Foundation & Validation | 2025-09-06T12:00:00.000Z | 2025-09-19T21:00:00.000Z | 14 | 0 | Market research, budget planning, risk mitigation setup | day | Alfredo Alfredo 100 |  |
| 11 | · · 1.1.1 Interview Existing Clients | 2025-09-06T12:00:00.000Z | 2025-09-10T21:00:00.000Z | 3 | 0 | CRITICAL PATH: Interview 3 current clients about communication pain points (6 hours) | day | Alfredo Alfredo 100 |  |
| 12 | · · 1.1.2 CDMX Market Research | 2025-09-11T12:00:00.000Z | 2025-09-19T21:00:00.000Z | 8 | 0 | CRITICAL PATH: Interview 10 CDMX SMBs to validate automation demand (20 hours) | day | Alfredo Alfredo 100 | 11FS |
| 13 | · · 1.2.1 Budget Breakdown | 2025-09-06T12:00:00.000Z | 2025-09-06T21:00:00.000Z | 1 | 0 | Create detailed budget with 20% contingency reserve (2 hours) | day | Alfredo Alfredo 100 |  |
| 14 | · · 1.2.2 Platform Cost Research | 2025-09-09T12:00:00.000Z | 2025-09-10T21:00:00.000Z | 2 | 0 | Research Telnyx vs alternatives, LancePilot pricing (4 hours) | day | Alfredo Alfredo 100 | 13FS |
| 15 | · · M1: Market Validation Complete | 2025-09-19T21:00:00.000Z | 2025-09-19T21:00:00.000Z | 0 | 0 | MILESTONE: 3+ prospects willing to pilot, value proposition validated | day | Alfredo Alfredo 100 | 12FS |
| 20 | · 2.0 Technical System Development | 2025-09-20T12:00:00.000Z | 2025-10-17T21:00:00.000Z | 28 | 0 | Voice AI, WhatsApp, CRM integration, and system testing | day | Alfredo Alfredo 100 | 15FS |
| 21 | · · 2.1.1 Telnyx Account Setup | 2025-09-20T12:00:00.000Z | 2025-09-23T21:00:00.000Z | 2 | 0 | CRITICAL PATH: Account setup and phone number provisioning (4 hours) | day | Alfredo Alfredo 100 | 15FS |
| 22 | · · 2.1.2 Spanish Script Development | 2025-09-24T12:00:00.000Z | 2025-09-27T21:00:00.000Z | 4 | 0 | CRITICAL PATH: Develop Spanish Voice AI scripts for lead capture (12 hours) | day | Alfredo Alfredo 100 | 21FS |
| 23 | · · 2.1.3 English Script Development | 2025-09-30T12:00:00.000Z | 2025-10-02T21:00:00.000Z | 3 | 0 | CRITICAL PATH: Develop English Voice AI scripts for Vancouver backup (8 hours) | day | Alfredo Alfredo 100 | 22FS |
| 24 | · · 2.1.4 Call Flow Implementation | 2025-10-04T12:00:00.000Z | 2025-10-10T21:00:00.000Z | 5 | 0 | CRITICAL PATH: Implement call logic and escalation protocols (16 hours) | day | Alfredo Alfredo 100 | 23FS |
| 25 | · · 2.2.1 LancePilot Setup | 2025-09-20T12:00:00.000Z | 2025-09-23T21:00:00.000Z | 2 | 0 | WhatsApp BSP account setup and verification (6 hours) | day | Alfredo Alfredo 100 | 14FS |
| 26 | · · 2.2.3 HSM Template Creation | 2025-10-04T12:00:00.000Z | 2025-10-10T21:00:00.000Z | 5 | 0 | Create 4 bilingual WhatsApp templates for Meta approval (16 hours) | day | Alfredo Alfredo 100 | 25FS |
| 27 | · · 2.3.1 CRM Integration | 2025-10-11T12:00:00.000Z | 2025-10-14T21:00:00.000Z | 2 | 0 | Google Sheets CRM with Zapier automation setup (6 hours) | day | Alfredo Alfredo 100 | 24FS |
| 28 | · · 2.4.1 Integration Testing | 2025-10-15T12:00:00.000Z | 2025-10-17T21:00:00.000Z | 3 | 0 | CRITICAL PATH: End-to-end system testing and optimization (12 hours) | day | Alfredo Alfredo 100 | 27FS |
| 29 | · · M2: Technical System Live | 2025-10-17T21:00:00.000Z | 2025-10-17T21:00:00.000Z | 0 | 0 | MILESTONE: Voice AI + WhatsApp system operational with 95% uptime | day | Alfredo Alfredo 100 | 28FS |
| 30 | · 3.0 Market Development & Client Acquisition | 2025-10-18T12:00:00.000Z | 2025-10-31T21:00:00.000Z | 14 | 0 | Demo materials, client engagement, outreach system deployment | day | Alfredo Alfredo 100 | 29FS |
| 31 | · · 3.3.1 Live Demo Script | 2025-10-18T12:00:00.000Z | 2025-10-22T21:00:00.000Z | 3 | 0 | CRITICAL PATH: Create compelling demo script for client presentations (12 hours) | day | Alfredo Alfredo 100 | 29FS |
| 32 | · · 3.1.1 Client Presentations | 2025-10-23T12:00:00.000Z | 2025-10-24T21:00:00.000Z | 2 | 0 | CRITICAL PATH: Present to 3 existing clients with demo (8 hours) | day | Alfredo Alfredo 100 | 31FS |
| 33 | · · 3.1.3 Demo Sessions | 2025-10-25T12:00:00.000Z | 2025-10-28T21:00:00.000Z | 2 | 0 | CRITICAL PATH: Conduct live demos and gather feedback (6 hours) | day | Alfredo Alfredo 100 | 32FS |
| 34 | · · M3: First Client Committed | 2025-10-31T21:00:00.000Z | 2025-10-31T21:00:00.000Z | 0 | 0 | MILESTONE: 1+ existing client signed to pilot program with payment | day | Alfredo Alfredo 100 | 33FS+3 |
| 40 | · 4.0 Business Process Development | 2025-11-01T12:00:00.000Z | 2025-11-28T21:00:00.000Z | 28 | 0 | Client onboarding, service delivery, operational systems | day | Alfredo Alfredo 100 | 34FS |
| 41 | · · 4.1.1 Onboarding Workflow | 2025-11-01T12:00:00.000Z | 2025-11-05T21:00:00.000Z | 3 | 0 | Document systematic client onboarding process (8 hours) | day | Alfredo Alfredo 100 | 34FS |
| 42 | · · 4.2.1 Service Framework | 2025-11-08T12:00:00.000Z | 2025-11-12T21:00:00.000Z | 3 | 0 | Create SLA templates and performance monitoring (8 hours) | day | Alfredo Alfredo 100 | 41FS |
| 43 | · · 4.3.1 Operations Systems | 2025-11-15T12:00:00.000Z | 2025-11-19T21:00:00.000Z | 3 | 0 | Daily operations checklists and automated reporting (12 hours) | day | Alfredo Alfredo 100 | 42FS |
| 44 | · · 4.4.1 Scaling Documentation | 2025-11-22T12:00:00.000Z | 2025-11-28T21:00:00.000Z | 5 | 0 | SOPs and delegation-ready process documentation (16 hours) | day | Alfredo Alfredo 100 | 43FS |
| 50 | · 5.0 Revenue Generation & Optimization | 2025-11-01T12:00:00.000Z | 2025-12-31T21:00:00.000Z | 61 | 0 | Client success, revenue optimization, referral systems | day | Alfredo Alfredo 100 | 34FS |
| 51 | · · 5.1.1 Client Success Monitoring | 2025-11-01T12:00:00.000Z | 2025-11-28T21:00:00.000Z | 20 | 0 | CRITICAL PATH: Daily client success tracking and optimization (48 hours total) | day | Alfredo Alfredo 100 | 34FS |
| 52 | · · 5.1.2 Performance Optimization | 2025-11-08T12:00:00.000Z | 2025-11-28T21:00:00.000Z | 15 | 0 | CRITICAL PATH: System performance improvements and refinements (32 hours) | day | Alfredo Alfredo 100 | 51SS+5 |
| 53 | · · 5.2.1 Pricing Optimization | 2025-11-25T12:00:00.000Z | 2025-11-28T21:00:00.000Z | 3 | 0 | Analyze pricing strategy and develop service packages (12 hours) | day | Alfredo Alfredo 100 | 51SS+18 |
| 54 | · · 5.3.1 Referral Program | 2025-12-01T12:00:00.000Z | 2025-12-09T21:00:00.000Z | 6 | 0 | Design and implement systematic referral generation (16 hours) | day | Alfredo Alfredo 100 | 52FS |
| 55 | · · 5.3.3 Case Study Creation | 2025-12-10T12:00:00.000Z | 2025-12-18T21:00:00.000Z | 6 | 0 | Document success stories and testimonials (16 hours) | day | Alfredo Alfredo 100 | 54FS |
| 56 | · · M4: Revenue Target Achieved | 2025-12-31T21:00:00.000Z | 2025-12-31T21:00:00.000Z | 0 | 0 | MILESTONE: $6000+ MXN monthly recurring revenue with 2+ active clients | day | Alfredo Alfredo 100 | 55FS+9 |
| 60 | · 6.0 Project Management | 2025-09-06T12:00:00.000Z | 2025-12-31T21:00:00.000Z | 116 | 0 | Ongoing project tracking, documentation, and knowledge management | day | Alfredo Alfredo 100 |  |
| 61 | · · 6.1.1 Weekly Progress Reviews | 2025-09-06T12:00:00.000Z | 2025-12-31T21:00:00.000Z | 116 | 0 | Continuous progress tracking and budget monitoring (2 hours/week) | day | Alfredo Alfredo 20 |  |
| 62 | · · 6.2.2 Documentation & Lessons | 2025-12-19T12:00:00.000Z | 2025-12-31T21:00:00.000Z | 10 | 0 | Final project documentation and knowledge transfer (16 hours) | day | Alfredo Alfredo 100 | 55FS |

Links (from, to):
- 8 12
- 13 17
